# SpartitoXML

Schedule from MS Project, 2016-02-25 to 2016-05-19, A marks actual dates.

## Calendars

- Standard: Mon-Fri 09:00-13:00, 14:00-18:00; Sat-Sun off.

## Resources

| Resource |
| --- |
| larovere vittorio |
| morisco gabriele |
| beggio luca |
| lanzi andrea |
| lazi |
| begio |

## Schedule

| ID | WBS | Task | Type | Duration | Start | Finish | Predecessors | Complete | Remaining | Total slack | Free slack | Constraint | Resources | Work | Actual work |
| --- | --- | --- | --- | --- | --- | --- | --- | --- | --- | --- | --- | --- | --- | --- | --- |
| 1 | 1 | **Spartito XML** |  | 61d | 2016-02-25 A | 2016-05-19 |  | 27% | 44.57d |  |  |  |  | 432h | 125h |
| 2 | 1.1 | **applicazione desktop** |  | 22d | 2016-02-25 A | 2016-03-25 |  | 33% | 14.82d |  |  |  |  | 334h | 109h |
| 3 | 1.1.1 | **area utente** |  | 23d | 2016-02-25 A | 2016-03-28 |  | 34% | 15.11d | 38d |  |  |  | 280h | 96h |
| 4 | 1.1.1.1 | **sezione: registrazione tag** |  | 23d | 2016-02-25 A | 2016-03-28 |  | 46% | 12.38d | 38d |  |  |  | 208h | 96h |
| 5 | 1.1.1.1.1 | **Registratore** |  | 23d | 2016-02-25 A | 2016-03-28 |  | 46% | 12.38d | 38d |  |  |  | 208h | 96h |
| 6 | 1.1.1.1.1.1 | **Riconoscimento BPM** |  | 1d | 2016-02-25 | 2016-02-25 |  |  |  | 0d |  |  |  | 24h |  |
| 7 | 1.1.1.1.1.1.1 | BPM conosciuti |  | 1d | 2016-02-25 | 2016-02-25 |  |  |  | 60d |  |  | beggio luca | 8h |  |
| 8 | 1.1.1.1.1.1.2 | BPM tappati |  | 1d | 2016-02-25 | 2016-02-25 |  |  |  | 60d |  |  | morisco gabriele | 8h |  |
| 9 | 1.1.1.1.1.1.3 | Gestore Timer | manual | 1d | 2016-02-25 | 2016-02-25 |  |  |  |  |  |  | morisco gabriele | 8h |  |
| 10 | 1.1.1.1.1.2 | Registrazione traccia |  | 1d | 2016-03-11 | 2016-03-11 | 40 |  |  | 49d |  |  | larovere vittorio | 8h |  |
| 11 | 1.1.1.1.1.3 | **Elaborazione Traccia** |  | 23d | 2016-02-25 A | 2016-03-28 |  | 55% | 10.45d | 38d |  |  |  | 176h | 96h |
| 12 | 1.1.1.1.1.3.1 | Riconoscere frequenza singole note |  | 12d | 2016-02-25 A | 2016-03-11 A |  | 100% |  |  |  | finish no earlier than 2016-03-11 | morisco gabriele | 96h | 96h |
| 13 | 1.1.1.1.1.3.2 | Riconoscere durata singole note |  | 4d | 2016-03-14 | 2016-03-17 | 12 |  |  | 45d |  | start no earlier than 2016-02-18 | lanzi andrea | 32h |  |
| 14 | 1.1.1.1.1.3.3 | Richiamare tutto all'interno del programma |  | 2d | 2016-03-18 | 2016-03-21 | 35, 12 |  |  | 37d | 1d | start no earlier than 2016-03-18 | lanzi andrea | 16h |  |
| 15 | 1.1.1.1.1.3.4 | **Scrittura File XML** |  | 4d | 2016-03-23 | 2016-03-28 |  |  |  | 36d |  |  |  | 32h |  |
| 16 | 1.1.1.1.1.3.4.1 | Parser XML in base alla grammatica corretta |  | 2d | 2016-03-23 | 2016-03-24 | 14 |  |  | 36d | 0d | start no earlier than 2016-03-23 | lanzi andrea | 16h |  |
| 17 | 1.1.1.1.1.3.4.2 | Salvataggio in locale e inviata su server |  | 2d | 2016-03-25 | 2016-03-28 | 16 |  |  | 36d | 0d |  | morisco gabriele | 16h |  |
| 18 | 1.1.1.2 | **sezione: credenziali utente** |  | 3d | 2016-02-25 | 2016-02-29 |  |  |  | 58d |  |  |  | 48h |  |
| 19 | 1.1.1.2.1 | cambiamento email |  | 3d | 2016-02-25 | 2016-02-29 |  |  |  | 58d |  |  | beggio luca | 24h |  |
| 20 | 1.1.1.2.2 | cambiamento password |  | 3d | 2016-02-25 | 2016-02-29 |  |  |  | 58d |  |  | beggio luca | 24h |  |
| 21 | 1.1.1.3 | **sezione: visualizzazione tag** |  | 2d | 2016-02-25 | 2016-02-26 |  |  |  | 0d |  |  |  | 24h |  |
| 22 | 1.1.1.3.1 | Filtro in base genere | manual | 1d | 2016-02-25 | 2016-02-25 |  |  |  |  |  |  | morisco gabriele | 8h |  |
| 23 | 1.1.1.3.2 | visualizza elenco di tutti i files xml sul server con link di download |  | 1d | 2016-02-26 | 2016-02-26 |  |  |  | 59d |  | start no earlier than 2016-02-25 | lanzi andrea | 8h |  |
| 24 | 1.1.1.3.3 | scarica zip con xml del tuo account |  | 1d | 2016-02-25 | 2016-02-25 |  |  |  | 60d |  |  | lanzi andrea | 8h |  |

| ID | WBS | Task | Type | Duration | Start | Finish | Predecessors | Complete | Remaining | Actual start | Total slack | Free slack | Constraint | Resources | Work | Actual work |
| --- | --- | --- | --- | --- | --- | --- | --- | --- | --- | --- | --- | --- | --- | --- | --- | --- |
| 25 | 1.1.2 | **area login (comunicazione con server)** |  | 12d | 2016-03-03 | 2016-03-18 |  | 17% | 10d | 2016-03-04 |  |  |  |  | 48h | 8h |
| 26 | 1.1.2.1 | login (implementazione) |  | 2d | 2016-03-04 A | 2016-03-07 | 30 | 50% | 1d |  | 53d |  | start no earlier than 2016-03-04 | beggio luca | 16h | 8h |
| 27 | 1.1.2.2 | registrazione nuovo utente (implementazione) |  | 2d | 2016-03-08 | 2016-03-10 | 31 |  |  |  | 50.88d |  |  | beggio luca | 16h |  |
| 28 | 1.1.2.3 | password dimenticata (implementazione) |  | 2d | 2016-03-10 | 2016-03-14 | 32 |  |  |  | 48.75d |  |  | beggio luca | 16h |  |
| 29 | 1.1.3 | **GUI** |  | 9d | 2016-03-03 A | 2016-03-15 |  | 83% | 1.5d |  |  |  |  |  | 6h | 5h |
| 30 | 1.1.3.1 | sezione login |  | 1h | 2016-03-03 A | 2016-03-03 A |  | 100% |  |  |  |  | start no earlier than 2016-03-03 | beggio luca | 1h | 1h |
| 31 | 1.1.3.2 | nuovo registrazione nuovo utente |  | 1h | 2016-03-08 A | 2016-03-08 A | 26 | 100% |  |  |  |  |  | beggio luca | 1h | 1h |
| 32 | 1.1.3.3 | sezione password dimenticata |  | 1h | 2016-03-10 A | 2016-03-10 A | 27 | 100% |  |  |  |  |  | beggio luca | 1h | 1h |
| 33 | 1.1.3.4 | sezione credenziali |  | 1h | 2016-03-14 A | 2016-03-14 A | 28 | 100% |  |  |  |  |  | beggio luca | 1h | 1h |
| 34 | 1.1.3.5 | sezione registrazione |  | 1h | 2016-03-14 A | 2016-03-14 A | 33 | 100% |  |  |  |  |  | beggio luca | 1h | 1h |
| 35 | 1.1.3.6 | sezione visualizza |  | 1h | 2016-03-14 | 2016-03-14 | 34 |  |  |  | 40.38d | 3.38d |  | beggio luca | 1h |  |
| 37 | 1.2 | **applicazione web** |  | 22d | 2016-02-25 | 2016-03-25 |  | 20% | 17.71d | 2016-03-03 |  |  |  |  | 82h | 16h |
| 38 | 1.2.1 | **area utente** |  | 9.75d | 2016-03-03 A | 2016-03-16 |  | 22% | 7.58d |  | 46d |  |  |  | 72h | 16h |
| 39 | 1.2.1.1 | **sezione: credenziali utente** |  | 2d | 2016-03-09 | 2016-03-10 |  |  |  |  | 49d |  |  |  | 16h |  |
| 40 | 1.2.1.1.1 | cambiamento email |  | 1d | 2016-03-10 | 2016-03-10 | 41 |  |  |  | 49d | 0d | start no earlier than 2016-02-25 | larovere vittorio | 8h |  |
| 41 | 1.2.1.1.2 | cambiamento password |  | 1d | 2016-03-09 | 2016-03-09 | 54 |  |  |  | 49d | 0d |  | larovere vittorio | 8h |  |
| 42 | 1.2.1.2 | **sezione: visualizzazione tag** |  | 3d | 2016-03-14 | 2016-03-16 |  |  |  |  | 0d |  |  |  | 32h |  |
| 43 | 1.2.1.2.1 | Filtro in base genere | manual | 1d | 2016-03-14 | 2016-03-14 |  |  |  |  |  |  |  | morisco gabriele | 8h |  |
| 44 | 1.2.1.2.2 | visualizza elenco files xml, con data e ora di creazione e con link di download |  | 2d | 2016-03-14 | 2016-03-15 |  |  |  |  | 46d | 0d | start no earlier than 2016-03-14 | morisco gabriele | 16h |  |
| 45 | 1.2.1.2.3 | scarica zip con xml del tuo account |  | 1d | 2016-03-16 | 2016-03-16 | 44 |  |  |  | 46d |  |  | morisco gabriele | 8h |  |
| 46 | 1.2.1.3 | **area login** |  | 3.5d | 2016-03-03 A | 2016-03-08 |  | 67% | 1.17d |  | 49d |  |  |  | 24h | 16h |
| 47 | 1.2.1.3.1 | login (implementazione) |  | 1d | 2016-03-03 A | 2016-03-04 A | 51 | 100% |  |  |  |  |  | larovere vittorio | 8h | 8h |
| 48 | 1.2.1.3.2 | registrazione nuovo utente (implementazione) |  | 1d | 2016-03-04 A | 2016-03-07 A | 52 | 100% |  |  |  |  |  | larovere vittorio | 8h | 8h |
| 49 | 1.2.1.3.3 | password dimenticata |  | 1d | 2016-03-07 | 2016-03-08 | 53 |  |  |  | 49d | 0d |  | larovere vittorio | 8h |  |

| ID | WBS | Task | Type | Duration | Start | Finish | Predecessors | Total slack | Free slack | Constraint | Resources | Work |
| --- | --- | --- | --- | --- | --- | --- | --- | --- | --- | --- | --- | --- |
| 50 | 1.2.2 | **GUI** |  | 7.75d | 2016-03-03 | 2016-03-14 |  |  |  |  |  | 10h |
| 51 | 1.2.2.1 | sezione login |  | 2h | 2016-03-03 | 2016-03-03 |  | 55.75d |  |  | morisco gabriele | 2h |
| 52 | 1.2.2.2 | nuovo registrazione nuovo utente |  | 2h | 2016-03-04 | 2016-03-04 | 47 | 54.5d |  | start no earlier than 2016-03-03 | morisco gabriele | 2h |
| 53 | 1.2.2.3 | sezione password dimenticata |  | 2h | 2016-03-07 | 2016-03-07 | 48 | 49d | 0d |  | morisco gabriele | 2h |
| 54 | 1.2.2.4 | sezione credenziali |  | 2h | 2016-03-08 | 2016-03-08 | 49 | 49d | 0d |  | morisco gabriele | 2h |
| 55 | 1.2.2.5 | sezione visualizza |  | 2h | 2016-03-09 | 2016-03-09 |  | 51.75d |  | start no earlier than 2016-03-09 | morisco gabriele | 2h |
| 58 | 1.3 | **server** |  | 13d | 2016-03-19 | 2016-04-05 |  |  |  |  |  | 16h |
| 59 | 1.3.1 | Ricezione - Risposta Login |  | 2d | 2016-03-29 | 2016-03-30 | 17 | 36d |  |  | lanzi andrea | 16h |
| 60 | 1.3.2 | Ricezione Iscrizione Nuovo Utente | manual | 1d? | 2016-03-19 | 2016-03-19 |  |  |  |  |  |  |
| 61 | 1.3.3 | Modifica credenziali | manual | 1d? | 2016-03-19 | 2016-03-19 |  |  |  |  |  |  |
| 62 | 1.3.4 | Ricezione - Risposta Visualizzazione files | manual | 1d? | 2016-03-19 | 2016-03-19 |  |  |  |  |  |  |
